# TrabalhoFinal

How a schedule from ProjectLibre changed from version to version. A marks actual dates.

## Version 1 (saved 2024-11-13, file CRO-V2.pod)

Note of the change: TKF-18-Adicionando DRE's e CRO's V1 e V2

| ID | WBS | Task | Duration | Start | Finish | Predecessors | Complete | Constraint |
| --- | --- | --- | --- | --- | --- | --- | --- | --- |
| 1 | 1 | **PROJETO TASKLY** | 18.98d | 2024-11-04 08:00 | 2024-11-28 16:48 |  | 17% |  |
| 2 | 1.1 | **Release 00** | 4d | 2024-11-04 08:00 | 2024-11-07 17:00 |  | 100% |  |
| 3 |  | Criar Dúvidas Elicitação Requisitos | 0.12d | 2024-11-04 08:00 | 2024-11-04 09:00 |  | 100% | start no earlier than 2024-11-04 07:00 |
| 4 |  | DRE | 0.5d | 2024-11-04 09:00 | 2024-11-04 14:00 | 3 | 100% |  |
| 5 |  | Telas | 0.12d | 2024-11-04 14:00 | 2024-11-04 15:00 | 4 | 100% |  |
| 6 |  | Matriz Rastreabilidade | 0.25d | 2024-11-04 15:00 | 2024-11-04 17:00 | 4 | 100% | start no earlier than 2024-11-04 15:00 |
| 7 |  | Cronograma Projeto | 0.5d | 2024-11-05 08:00 | 2024-11-05 13:00 | 4 | 100% | start no earlier than 2024-11-05 08:00 |
| 8 |  | Entrega Release 00 | 0.12d | 2024-11-07 16:00 | 2024-11-07 17:00 |  | 100% | start no earlier than 2024-11-07 16:00 |
| 9 | 1.2 | **Release 01** | 4d | 2024-11-11 08:00 | 2024-11-14 17:00 |  |  |  |
| 10 | 1.2.1 | **[RFC04] Manter Projeto** | 1d | 2024-11-11 08:00 | 2024-11-11 17:00 |  |  |  |
| 11 |  | [RFS13] Inserir Projeto | 0.12d | 2024-11-11 08:00 | 2024-11-11 09:00 | 8 |  | start no earlier than 2024-11-11 08:00 |
| 12 |  | [RFS14] Consultar Projeto | 0.12d | 2024-11-11 09:00 | 2024-11-11 10:00 | 8 |  | start no earlier than 2024-11-11 09:00 |
| 13 |  | [RFS15] Alterar Projeto | 0.12d | 2024-11-11 10:00 | 2024-11-11 11:00 | 8 |  | start no earlier than 2024-11-11 10:00 |
| 14 |  | [RFS16] Remover Projeto | 0.12d | 2024-11-11 11:00 | 2024-11-11 13:00 | 8 |  | start no earlier than 2024-11-11 11:00 |
| 15 |  | Teste [RFC04] | 0.25d | 2024-11-11 13:00 | 2024-11-11 15:00 |  |  | start no earlier than 2024-11-11 13:00 |
| 16 |  | Ajuste [RFC04] | 0.25d | 2024-11-11 15:00 | 2024-11-11 17:00 | 15 |  |  |
| 17 | 1.2.2 | **[RFC02] Manter Tarefa** | 1d | 2024-11-12 08:00 | 2024-11-12 17:00 |  |  |  |
| 18 |  | [RFS05] Inserir Tarefa | 0.12d | 2024-11-12 08:00 | 2024-11-12 09:00 | 16 |  | start no earlier than 2024-11-12 08:00 |
| 19 |  | [RFS06] Consultar Tarefa | 0.12d | 2024-11-12 09:00 | 2024-11-12 10:00 | 16 |  | start no earlier than 2024-11-12 09:00 |
| 20 |  | [RFS07] Alterar Tarefa | 0.12d | 2024-11-12 10:00 | 2024-11-12 11:00 | 16 |  | start no earlier than 2024-11-12 10:00 |
| 21 |  | [RSF08] Remover Tarefa | 0.12d | 2024-11-12 11:00 | 2024-11-12 13:00 | 16 |  | start no earlier than 2024-11-12 11:00 |
| 22 |  | Teste [RFC02] | 0.25d | 2024-11-12 13:00 | 2024-11-12 15:00 | 21 |  |  |
| 23 |  | Ajuste [RFC02] | 0.25d | 2024-11-12 15:00 | 2024-11-12 17:00 | 22 |  |  |
| 24 |  | Entrega Release 01 | 0.12d | 2024-11-14 16:00 | 2024-11-14 17:00 |  |  | start no earlier than 2024-11-14 16:00 |
| 25 | 1.3 | **Release 02** | 4d | 2024-11-18 08:00 | 2024-11-21 17:00 |  |  |  |
| 26 | 1.3.1 | **[RFC03] Manter Subtarefa** | 1d | 2024-11-18 08:00 | 2024-11-18 17:00 |  |  |  |
| 27 |  | [RFS09] Inserir Subtarefa | 0.12d | 2024-11-18 08:00 | 2024-11-18 09:00 | 24 |  | start no earlier than 2024-11-18 08:00 |
| 28 |  | [RFS10] Consultar Subtarefa | 0.88d | 2024-11-18 09:00 | 2024-11-18 17:00 | 24 |  | start no earlier than 2024-11-18 09:00 |
| 29 |  | [RFS11] Alterar Subtarefa | 0.12d | 2024-11-18 10:00 | 2024-11-18 11:00 | 24 |  | start no earlier than 2024-11-18 10:00 |
| 30 |  | [RFS12] Remover Subtarefa | 0.12d | 2024-11-18 11:00 | 2024-11-18 13:00 | 24 |  | start no earlier than 2024-11-18 11:00 |
| 31 |  | Teste [RFC03] | 0.25d | 2024-11-18 13:00 | 2024-11-18 15:00 | 30 |  |  |
| 32 |  | Ajuste [RFC03] | 0.25d | 2024-11-18 15:00 | 2024-11-18 17:00 | 31 |  |  |
| 33 | 1.3.2 | **[RFC06] Manter Status** | 1d | 2024-11-19 08:00 | 2024-11-19 17:00 |  |  |  |
| 34 |  | [RFS21] Inserir Status | 0.12d | 2024-11-19 08:00 | 2024-11-19 09:00 | 32 |  | start no earlier than 2024-11-18 08:00 |
| 35 |  | [RFS22] Consultar Status | 0.12d | 2024-11-19 09:00 | 2024-11-19 10:00 | 32 |  | start no earlier than 2024-11-19 09:00 |
| 36 |  | [RFS23] Alterar Status | 0.12d | 2024-11-19 10:00 | 2024-11-19 11:00 | 32 |  | start no earlier than 2024-11-19 10:00 |
| 37 |  | [RFS24] Remover Status | 0.12d | 2024-11-19 11:00 | 2024-11-19 13:00 | 32 |  | start no earlier than 2024-11-19 11:00 |
| 38 |  | Teste [RFC06] | 0.25d | 2024-11-19 13:00 | 2024-11-19 15:00 | 37 |  | start no earlier than 2024-11-18 13:00 |
| 39 |  | Ajuste [RFC06] | 0.25d | 2024-11-19 15:00 | 2024-11-19 17:00 | 38 |  |  |
| 40 | 1.3.3 | **[RFC09] Relatório Progresso Tarefa** | 1d | 2024-11-20 08:00 | 2024-11-20 17:00 |  |  |  |
| 41 |  | [RFS25] Implementar Relatório | 0.5d | 2024-11-20 08:00 | 2024-11-20 13:00 | 39 |  | start no earlier than 2024-11-19 09:00 |
| 42 |  | Teste [RFC09] | 0.25d | 2024-11-20 13:00 | 2024-11-20 15:00 | 41 |  | start no earlier than 2024-11-20 13:00 |
| 43 |  | Ajuste [RFC09] | 0.25d | 2024-11-20 15:00 | 2024-11-20 17:00 | 42 |  |  |
| 44 |  | Entrega Release 02 | 0.12d | 2024-11-21 16:00 | 2024-11-21 17:00 |  |  | start no earlier than 2024-11-21 16:00 |
| 45 | 1.4 | **Release 03** | 3.98d | 2024-11-25 08:00 | 2024-11-28 16:48 |  |  |  |
| 46 | 1.4.1 | **[RFC01] Manter Usuário** | 1d | 2024-11-25 08:00 | 2024-11-25 17:00 |  |  |  |
| 47 |  | [RFS01] Inserir Usuário | 0.12d | 2024-11-25 08:00 | 2024-11-25 09:00 | 44 |  | start no earlier than 2024-11-25 08:00 |
| 48 |  | [RFS02] Consultar Usuário | 0.12d | 2024-11-25 09:00 | 2024-11-25 10:00 | 44 |  | start no earlier than 2024-11-25 09:00 |
| 49 |  | [RFS03] Alterar Usuário | 0.12d | 2024-11-25 10:00 | 2024-11-25 11:00 | 44 |  | start no earlier than 2024-11-25 10:00 |
| 50 |  | [RFS04] Remover Usuário | 0.12d | 2024-11-25 11:00 | 2024-11-25 13:00 | 44 |  | start no earlier than 2024-11-25 11:00 |
| 51 |  | Teste [RFC01] | 0.25d | 2024-11-25 13:00 | 2024-11-25 15:00 | 50 |  |  |
| 52 |  | Ajuste [RFC01] | 0.25d | 2024-11-25 15:00 | 2024-11-25 17:00 | 51 |  |  |
| 53 | 1.4.2 | **[RFC05] Manter Cliente Externo** | 1d | 2024-11-26 08:00 | 2024-11-26 17:00 |  |  |  |
| 54 |  | [RFS17] Inserir Cliente Externo | 0.12d | 2024-11-26 08:00 | 2024-11-26 09:00 | 52 |  |  |
| 55 |  | [RFS18] Consultar Cliente Externo | 0.12d | 2024-11-26 09:00 | 2024-11-26 10:00 | 52 |  | start no earlier than 2024-11-26 09:00 |
| 56 |  | [RFS19] Alterar Cliente Externo | 0.12d | 2024-11-26 10:00 | 2024-11-26 11:00 | 52 |  | start no earlier than 2024-11-26 10:00 |
| 57 |  | [RFS20] Remover Cliente Externo | 0.12d | 2024-11-26 11:00 | 2024-11-26 13:00 | 52 |  | start no earlier than 2024-11-26 11:00 |
| 58 |  | Teste [RFC05] | 0.25d | 2024-11-26 13:00 | 2024-11-26 15:00 | 57 |  |  |
| 59 |  | Ajuste [RFC05] | 0.25d | 2024-11-26 15:00 | 2024-11-26 17:00 | 58 |  |  |
| 60 | 1.4.3 | **[RFC10] Relatório Progresso Tarefa** | 1d | 2024-11-27 08:00 | 2024-11-27 17:00 |  |  |  |
| 61 |  | [RFS26] Implementar Relatório | 0.5d | 2024-11-27 08:00 | 2024-11-27 13:00 | 59 |  |  |
| 62 |  | Teste [RFC10] | 0.25d | 2024-11-27 13:00 | 2024-11-27 15:00 | 61 |  | start no earlier than 2024-11-27 13:00 |
| 63 |  | Ajuste [RFC10] | 0.25d | 2024-11-27 15:00 | 2024-11-27 17:00 | 62 |  |  |
| 64 |  | Entrega Release 03 | 0.1d | 2024-11-28 16:00 | 2024-11-28 16:48 |  |  | start no earlier than 2024-11-28 16:00 |

## Version 2 (saved 2024-11-21, file CRO-V3.pod)

Note of the change: TKF-23-Adicionando o teste do selenium da release 2.

Last finish stays 2024-11-28. Complete tasks 6 → 34.

Changed:

| ID | Task | Start | Complete |
| --- | --- | --- | --- |
| 1 | **PROJETO TASKLY** |  | 17% → 70% |
| 9 | **Release 01** |  | 0% → 100% |
| 10 | **[RFC04] Manter Projeto** |  | 0% → 100% |
| 11 | [RFS13] Inserir Projeto |  | 0% → 100% |
| 12 | [RFS14] Consultar Projeto |  | 0% → 100% |
| 13 | [RFS15] Alterar Projeto |  | 0% → 100% |
| 14 | [RFS16] Remover Projeto |  | 0% → 100% |
| 15 | Teste [RFC04] | 2024-11-11 13:00 → 2024-11-11 12:00 | 0% → 100% |
| 16 | Ajuste [RFC04] |  | 0% → 100% |
| 17 | **[RFC02] Manter Tarefa** |  | 0% → 100% |
| 18 | [RFS05] Inserir Tarefa |  | 0% → 100% |
| 19 | [RFS06] Consultar Tarefa |  | 0% → 100% |
| 20 | [RFS07] Alterar Tarefa |  | 0% → 100% |
| 21 | [RSF08] Remover Tarefa |  | 0% → 100% |
| 22 | Teste [RFC02] | 2024-11-12 13:00 → 2024-11-12 12:00 | 0% → 100% |
| 23 | Ajuste [RFC02] |  | 0% → 100% |
| 24 | Entrega Release 01 |  | 0% → 100% |
| 25 | **Release 02** |  | 0% → 94% |
| 26 | **[RFC03] Manter Subtarefa** |  | 0% → 100% |
| 27 | [RFS09] Inserir Subtarefa |  | 0% → 100% |
| 28 | [RFS10] Consultar Subtarefa |  | 0% → 100% |
| 29 | [RFS11] Alterar Subtarefa |  | 0% → 100% |
| 30 | [RFS12] Remover Subtarefa |  | 0% → 100% |
| 31 | Teste [RFC03] | 2024-11-18 13:00 → 2024-11-18 12:00 | 0% → 100% |
| 32 | Ajuste [RFC03] |  | 0% → 100% |
| 33 | **[RFC06] Manter Status** |  | 0% → 100% |
| 34 | [RFS21] Inserir Status |  | 0% → 100% |
| 35 | [RFS22] Consultar Status |  | 0% → 100% |
| 36 | [RFS23] Alterar Status |  | 0% → 100% |
| 37 | [RFS24] Remover Status |  | 0% → 100% |
| 38 | Teste [RFC06] | 2024-11-19 13:00 → 2024-11-19 12:00 | 0% → 100% |
| 39 | Ajuste [RFC06] |  | 0% → 100% |
| 40 | **[RFC09] Relatório Progresso Tarefa** |  | 0% → 100% |
| 41 | [RFS25] Implementar Relatório |  | 0% → 100% |
| 42 | Teste [RFC09] | 2024-11-20 13:00 → 2024-11-20 12:00 | 0% → 100% |
| 43 | Ajuste [RFC09] |  | 0% → 100% |

## Version 3 (saved 2024-11-28, file CRO.pod)

Note of the change: TKF-27-RFC05-Adicionando Manter Cliente

Last finish stays 2024-11-28. Complete tasks 34 → 50.

Changed:

| ID | Task | Start | Complete | Other |
| --- | --- | --- | --- | --- |
| 1 | **PROJETO TASKLY** |  | 70% → 98% |  |
| 25 | **Release 02** |  | 94% → 100% |  |
| 44 | Entrega Release 02 |  | 0% → 100% |  |
| 45 | **Release 03** |  | 0% → 94% |  |
| 46 | **[RFC01] Manter Usuário** |  | 0% → 100% |  |
| 47 | [RFS01] Inserir Usuário |  | 0% → 100% |  |
| 48 | [RFS02] Consultar Usuário |  | 0% → 100% |  |
| 49 | [RFS03] Alterar Usuário |  | 0% → 100% |  |
| 50 | [RFS04] Remover Usuário |  | 0% → 100% |  |
| 51 | Teste [RFC01] | 2024-11-25 13:00 → 2024-11-25 12:00 | 0% → 100% |  |
| 52 | Ajuste [RFC01] |  | 0% → 100% |  |
| 53 | **[RFC05] Manter Cliente** |  | 0% → 100% | was named [RFC05] Manter Cliente Externo |
| 54 | [RFS17] Inserir Cliente |  | 0% → 100% | was named [RFS17] Inserir Cliente Externo |
| 55 | [RFS18] Consultar Cliente |  | 0% → 100% | was named [RFS18] Consultar Cliente Externo |
| 56 | [RFS19] Alterar Cliente |  | 0% → 100% | was named [RFS19] Alterar Cliente Externo |
| 57 | [RFS20] Remover Cliente |  | 0% → 100% | was named [RFS20] Remover Cliente Externo |
| 58 | Teste [RFC05] | 2024-11-26 13:00 → 2024-11-26 12:00 | 0% → 100% |  |
| 59 | Ajuste [RFC05] |  | 0% → 100% |  |
| 60 | **[RFC10] Relatório Carga de Trabalho** |  | 0% → 100% | was named [RFC10] Relatório Progresso Tarefa |
| 61 | [RFS26] Implementar Relatório |  | 0% → 100% |  |
| 62 | Teste [RFC10] | 2024-11-27 13:00 → 2024-11-27 12:00 | 0% → 100% |  |
| 63 | Ajuste [RFC10] |  | 0% → 100% |  |

## Version 4 (saved 2024-11-28, file CRO.pod)

Note of the change: TKF-29-Atualização CRO e do teste release 03

Last finish stays 2024-11-28. Complete tasks 50 → 51.

Changed:

| ID | Task | Complete |
| --- | --- | --- |
| 1 | **PROJETO TASKLY** | 98% → 100% |
| 45 | **Release 03** | 94% → 100% |
| 64 | Entrega Release 03 | 0% → 100% |
